# Diagrama de Gantt

Schedule from MS Project, 2018-10-15 to 2019-12-13, 4 hours a day, costs in $, A marks actual dates.

## Calendars

- Estándar: Mon-Fri 07:00-11:00; Sat-Sun off. Exceptions (off unless hours are given): 2018-12-17 to 2019-02-01 (Receso Navidad), 2019-04-14 to 2019-04-21 (Semana santa), 2019-06-01 to 2019-06-30 (Receso mitad de año).

## Resources

| Resource | Group | Unit | Rate |
| --- | --- | --- | --- |
| Anderson Stiven Yaguma Diaz | Programador |  | 20000 |
| Jhostin David Cespedes Campo | Programador |  | 20000 |
| Otoniel Hernández Garzon | Programador |  | 20000 |
| servicios basicos | Servivios Publicos | Mensual | 800000 |
| DigitalOcean-Hosting | Servicios web | Mensual | 700000 |
| equipos | Herramienta | Mensual | 50000 |
| Dominio-latinoamerica | Servicios web | Mensual | 64500 |

## Schedule

| ID | WBS | Task | Duration | Start | Finish | Predecessors | Complete | Remaining | Actual finish | Total slack | Resources | Work | Actual work | Cost | Actual cost |
| --- | --- | --- | --- | --- | --- | --- | --- | --- | --- | --- | --- | --- | --- | --- | --- |
| 1 | 1 | **Proyecto** | 245d | 2018-10-15 A | 2019-12-13 |  | 39% | 149.39d |  | 0d |  | 808h | 628h | 25,032,500 | 14,974,500 |
| 2 | 1.1 | **Análisis y Planeación** | 47d | 2018-10-15 A | 2019-02-05 A |  | 100% |  |  |  | servicios basicos [1 Mensual]; DigitalOcean-Hosting; Dominio-latinoamerica; equipos | 372h | 372h | 8,240,000 | 8,240,000 |
| 3 | 1.1.1 | Programación estructurada | 5d | 2018-10-15 A | 2018-10-19 A |  | 100% |  |  |  | Anderson Stiven Yaguma Diaz; Jhostin David Cespedes Campo; Otoniel Hernández Garzon | 60h | 60h | 1,200,000 | 1,200,000 |
| 4 | 1.1.2 | Levantamiento de información | 5d | 2018-10-22 A | 2018-10-26 A | 3 | 100% |  |  |  | Anderson Stiven Yaguma Diaz | 20h | 20h | 400,000 | 400,000 |
| 5 | 1.1.3 | Aplicación de técnica de levantamiento de información | 5d | 2018-10-29 A | 2018-11-02 A | 4 | 100% |  |  |  | Anderson Stiven Yaguma Diaz; Jhostin David Cespedes Campo; Otoniel Hernández Garzon | 60h | 60h | 1,200,000 | 1,200,000 |
| 6 | 1.1.4 | Análisis de la información | 5d | 2018-11-05 A | 2018-11-09 A | 5 | 100% |  |  |  | Anderson Stiven Yaguma Diaz; Jhostin David Cespedes Campo; Otoniel Hernández Garzon | 60h | 60h | 1,200,000 | 1,200,000 |
| 7 | 1.1.5 | **Componente Metodológico** | 27d | 2018-11-12 A | 2019-02-05 A | 6 | 100% |  |  |  |  | 172h | 172h | 3,440,000 | 3,440,000 |
| 8 | 1.1.5.1 | Nombre del proyecto | 4d | 2018-11-12 A | 2018-11-15 A |  | 100% |  |  |  | Anderson Stiven Yaguma Diaz | 16h | 16h | 320,000 | 320,000 |
| 9 | 1.1.5.2 | Objetivo General | 5d | 2018-11-16 A | 2018-11-22 A | 8 | 100% |  |  |  | Otoniel Hernández Garzon | 20h | 20h | 400,000 | 400,000 |
| 10 | 1.1.5.3 | Objetivo Específicos | 5d | 2018-11-23 A | 2018-11-29 A | 9 | 100% |  |  |  | Otoniel Hernández Garzon | 20h | 20h | 400,000 | 400,000 |
| 11 | 1.1.5.4 | Planteamiento del Problema | 5d | 2018-11-30 A | 2018-12-06 A | 10 | 100% |  |  |  | Anderson Stiven Yaguma Diaz; Jhostin David Cespedes Campo | 40h | 40h | 800,000 | 800,000 |
| 12 | 1.1.5.5 | Alcance del proyecto | 5d | 2018-12-07 A | 2018-12-13 A | 11 | 100% |  |  |  | Anderson Stiven Yaguma Diaz; Otoniel Hernández Garzon | 40h | 40h | 800,000 | 800,000 |
| 13 | 1.1.5.6 | Justificación | 3d | 2018-12-14 A | 2019-02-05 A | 12 | 100% |  |  |  | Anderson Stiven Yaguma Diaz; Jhostin David Cespedes Campo; Otoniel Hernández Garzon | 36h | 36h | 720,000 | 720,000 |
| 14 | 1.2 | **Diseño** | 45d | 2019-02-04 A | 2019-04-08 |  | 100% |  | 2019-04-12 |  | servicios basicos [1 Mensual]; equipos [1 Mensual]; DigitalOcean-Hosting [1 Mensual]; Dominio-latinoamerica [1 Mensual] | 256h | 256h | 6,734,500 | 6,734,500 |
| 15 | 1.2.1 | Requerimientos Funcionales | 4d | 2019-02-04 A | 2019-02-08 A |  | 100% |  |  |  | Otoniel Hernández Garzon | 16h | 16h | 320,000 | 320,000 |
| 16 | 1.2.2 | Requerimientos No Funcionales | 5d | 2019-02-11 A | 2019-02-18 A | 15 | 100% |  |  |  | Anderson Stiven Yaguma Diaz; Otoniel Hernández Garzon | 40h | 40h | 800,000 | 800,000 |
| 17 | 1.2.3 | BPMN | 5d | 2019-02-18 A | 2019-02-22 A | 16 | 100% |  |  |  | Otoniel Hernández Garzon | 20h | 20h | 400,000 | 400,000 |
| 18 | 1.2.4 | Modelo Entidad Relación | 5d | 2019-02-25 A | 2019-03-01 A | 17 | 100% |  |  |  | Anderson Stiven Yaguma Diaz | 20h | 20h | 400,000 | 400,000 |
| 19 | 1.2.5 | Diagrama de Entidad y Relación | 10d | 2019-03-04 A | 2019-03-15 A | 18 | 100% |  |  |  | Anderson Stiven Yaguma Diaz; Otoniel Hernández Garzon | 80h | 80h | 1,600,000 | 1,600,000 |
| 20 | 1.2.6 | Diagramas UML | 5d | 2019-03-18 A | 2019-03-22 A | 19 | 100% |  |  |  | Anderson Stiven Yaguma Diaz | 20h | 20h | 400,000 | 400,000 |
| 21 | 1.2.7 | Normalización de bases de datos | 5d | 2019-03-25 A | 2019-03-29 A | 20 | 100% |  |  |  | Otoniel Hernández Garzon | 20h | 20h | 400,000 | 400,000 |
| 22 | 1.2.8 | Prototipos y Mockup | 10d | 2019-04-01 A | 2019-04-12 A |  | 100% |  |  |  | Jhostin David Cespedes Campo | 40h | 40h | 800,000 | 800,000 |
| 23 | 1.3 | **Desarrollo Etapa 1** | 30d | 2019-04-22 | 2019-05-31 | 22 |  |  |  | 0d | servicios basicos [1 Mensual]; DigitalOcean-Hosting [1 Mensual]; Dominio-latinoamerica [1 Mensual]; equipos [1 Mensual] | 180h |  | 5,214,500 |  |
| 24 | 1.3.1 | Base de datos | 10d | 2019-04-22 | 2019-05-03 |  |  |  |  | 0d | Anderson Stiven Yaguma Diaz | 40h |  | 800,000 |  |
| 25 | 1.3.2 | Construcción de la Base de Datos | 10d | 2019-05-06 | 2019-05-17 | 24 |  |  |  | 0d | Otoniel Hernández Garzon; Jhostin David Cespedes Campo | 80h |  | 1,600,000 |  |
| 26 | 1.3.3 | Datos insertados en la Base de Datos | 5d | 2019-05-20 | 2019-05-24 | 25 |  |  |  | 0d | Anderson Stiven Yaguma Diaz; Otoniel Hernández Garzon | 40h |  | 800,000 |  |
| 27 | 1.3.4 | Consultas y Join en la Base y Datos | 5d | 2019-05-27 | 2019-05-31 | 26 |  |  |  | 0d | Jhostin David Cespedes Campo | 20h |  | 400,000 |  |

Notes:
- 6: Se agrega una Receso navideño
- 22: Se agrega la senama santa desde Abril 14 hasta 21.
- 27: Se agrega el receso de Junio del 1 hasta 30

| ID | WBS | Task | Duration | Start | Finish | Predecessors | Total slack | Resources | Cost |
| --- | --- | --- | --- | --- | --- | --- | --- | --- | --- |
| 28 | 1.4 | **Desarrollo Etapa 2** | 30d | 2019-07-01 | 2019-08-09 | 27 | 0d | servicios basicos [1 Mensual]; DigitalOcean-Hosting [1 Mensual]; Dominio-latinoamerica [1 Mensual]; equipos [1 Mensual] | 1,614,500 |
| 29 | 1.4.1 | Codificación y CRUD | 10d | 2019-07-01 | 2019-07-12 |  | 0d |  |  |
| 30 | 1.4.2 | Conexión de base de datos | 10d | 2019-07-15 | 2019-07-26 | 29 | 0d |  |  |
| 31 | 1.4.3 | CRUD Funcional módulos del sistema | 10d | 2019-07-29 | 2019-08-09 | 30 | 0d |  |  |
| 32 | 1.5 | **Prueba de Software** | 40d | 2019-08-12 | 2019-10-04 | 31 | 0d | servicios basicos [1 Mensual]; DigitalOcean-Hosting [1 Mensual]; Dominio-latinoamerica [1 Mensual]; equipos [1 Mensual] | 1,614,500 |
| 33 | 1.5.1 | Prueba de caja negra | 10d | 2019-08-12 | 2019-08-23 |  | 0d |  |  |
| 34 | 1.5.2 | prueba de caja blanca | 10d | 2019-08-26 | 2019-09-06 | 33 | 0d |  |  |
| 35 | 1.5.3 | prueba de estrés | 10d | 2019-09-09 | 2019-09-20 | 34 | 0d |  |  |
| 36 | 1.5.4 | prueba de unitaria | 10d | 2019-09-23 | 2019-10-04 | 35 | 0d |  |  |
| 37 | 1.6 | **Modelo De Calidad** | 50d | 2019-10-07 | 2019-12-13 | 36 | 0d | servicios basicos [1 Mensual]; DigitalOcean-Hosting [1 Mensual]; Dominio-latinoamerica [1 Mensual]; equipos [1 Mensual] | 1,614,500 |
| 38 | 1.6.1 | Formatos de calidad | 10d | 2019-10-07 | 2019-10-18 |  | 0d |  |  |
| 39 | 1.6.2 | Elaboración de contratos | 10d | 2019-10-21 | 2019-11-01 | 38 | 0d |  |  |
| 40 | 1.6.3 | Construcción de calidad de usuario y operación | 30d | 2019-11-04 | 2019-12-13 | 39 | 0d |  |  |
